# new_project

Schedule from MS Project, 2018-09-19 to 2019-01-09, A marks actual dates.

## Calendars

- 标准: Mon-Fri 08:00-12:00, 13:00-17:00; Sat-Sun off. Exceptions (off unless hours are given): 2018-09-29 08:00-12:00, 13:00-17:00 (补课), 2018-10-13 08:00-12:00, 13:00-17:00 (工作日1), 2018-10-27 08:00-12:00, 13:00-17:00 (工作日2), 2018-10-28 08:00-12:00, 13:00-17:00 (工作日3), 2018-11-10 08:00-12:00, 13:00-17:00 (工作日4), 2018-12-15 08:00-12:00, 13:00-17:00 (工作日5), 2019-01-05 08:00-12:00, 13:00-17:00 (工作日6).

## Resources

| Resource |
| --- |
| 罗培城 |
| 张嘉诚 |
| 苏碧青 |
| 赵豪杰 |
| 郑丞钧 |

## Schedule

| ID | WBS | Task | Type | Duration | Start | Finish | Predecessors | Complete | Remaining | Actual start | Total slack | Constraint | Resources | Work | Actual work | 输入 | 输出 |
| --- | --- | --- | --- | --- | --- | --- | --- | --- | --- | --- | --- | --- | --- | --- | --- | --- | --- |
| 1 | 1 | **软件工程系列渔乐生活APP需求工程计划** |  | 88d | 2018-09-19 A | 2019-01-09 |  | 20% | 70.51d |  |  |  |  | 1851.2h | 381.6h |  |  |
| 2 | 1.1 | **项目准备** |  | 6d | 2018-09-19 A | 2018-09-26 A |  | 100% |  |  |  |  |  | 144h | 144h |  |  |
| 3 | 1.1.1 | 项目任务书下达 | manual | 1d | 2018-09-19 A | 2018-09-19 A |  | 100% |  |  |  |  | 赵豪杰 | 8h | 8h | 项目提出 | 项目确认 |
| 4 | 1.1.2 | 小组会议 |  | 1d | 2018-09-20 A | 2018-09-20 A | 3 | 100% |  |  |  |  | 赵豪杰; 张嘉诚; 罗培城; 苏碧青; 郑丞钧 | 40h | 40h | 学习笔记 | 会议记录 |
| 5 | 1.1.3 | logo设计 |  | 1d | 2018-09-21 A | 2018-09-21 A | 4 | 100% |  |  |  |  | 苏碧青 | 8h | 8h | 素材 | 渔乐生活logo |
| 6 | 1.1.4 | 软件资源配置 |  | 1d | 2018-09-21 A | 2018-09-21 A | 4 | 100% |  |  |  |  | 罗培城 | 8h | 8h | 安装 | 软件资源 |
| 7 | 1.1.5 | UML学习 |  | 1d | 2018-09-24 A | 2018-09-24 A | 4 | 100% |  |  |  | start no earlier than 2018-09-24 | 罗培城; 苏碧青; 张嘉诚; 赵豪杰; 郑丞钧 | 40h | 40h |  |  |
| 8 | 1.1.6 | 与杨枨老师确认项目大致内容 | manual | 1d | 2018-09-26 A | 2018-09-26 A | 7 | 100% |  |  |  | start no earlier than 2018-09-26 | 罗培城; 苏碧青; 张嘉诚; 赵豪杰; 郑丞钧 | 40h | 40h | 谈话记录 | 录音资料 |
| 9 | 1.2 | **项目启动** |  | 2d | 2018-09-27 A | 2018-09-28 A | 2 | 100% |  |  |  |  |  | 48h | 48h |  |  |
| 10 | 1.2.1 | 小组会议 | manual | 1d | 2018-09-27 A | 2018-09-27 A | 8 | 100% |  |  |  |  | 罗培城; 苏碧青; 张嘉诚; 赵豪杰; 郑丞钧 | 40h | 40h | 学习笔记 | 会议记录 |
| 11 | 1.2.2 | **可行性分析** |  | 1d | 2018-09-28 A | 2018-09-28 A | 10 | 100% |  |  |  |  |  | 8h | 8h |  |  |
| 12 | 1.2.2.1 | 可行性分析文档完成 |  | 1d | 2018-09-28 A | 2018-09-28 A | 10 | 100% |  |  |  |  | 罗培城 | 8h | 8h | 初步可行性分析文档，可行性文档中的图表 | 可行性分析文档 |
| 13 | 1.3 | **项目计划** |  | 51d | 2018-09-28 | 2018-11-30 | 9 | 23% | 39.03d | 2018-09-29 |  |  |  | 779.2h | 189.6h |  |  |
| 14 | 1.3.1 | **第一次迭代** |  | 33d | 2018-09-29 A | 2018-11-08 | 12 | 30% | 23.26d |  | 0d |  |  | 643.2h | 189.6h |  |  |
| 15 | 1.3.1.1 | **需求工程阶段-初步** |  | 1d | 2018-09-29 A | 2018-09-29 A | 12 | 100% |  |  |  |  |  | 64h | 64h |  |  |
| 16 | 1.3.1.1.1 | 需求工程起草 | manual | 1d | 2018-09-29 A | 2018-09-29 A | 12 | 100% |  |  |  |  | 张嘉诚 | 8h | 8h | 会议记录 | 需求工程起草文档 |
| 17 | 1.3.1.1.2 | 甘特图 |  | 1d | 2018-09-29 A | 2018-09-29 A | 12 | 100% |  |  |  |  | 郑丞钧 | 8h | 8h | 会议记录 | 甘特图 |
| 18 | 1.3.1.1.3 | OBS | manual | 0.5d | 2018-09-29 A | 2018-09-29 A | 12 | 100% |  |  |  |  | 苏碧青 | 4h | 4h | 会议记录 | OBS |
| 19 | 1.3.1.1.4 | WBS | manual | 0.5d | 2018-09-29 A | 2018-09-29 A | 18 | 100% |  |  |  |  | 苏碧青 | 4h | 4h | 会议记录 | WBS |
| 20 | 1.3.1.1.5 | 项目章程 | manual | 1d | 2018-09-29 A | 2018-09-29 A | 12 | 100% |  |  |  |  | 赵豪杰 | 8h | 8h |  |  |
| 21 | 1.3.1.1.6 | 项目计划起草 | manual | 1d | 2018-09-29 A | 2018-09-29 A | 12 | 100% |  |  |  |  | 罗培城; 苏碧青; 张嘉诚; 郑丞钧 | 32h | 32h | OBS、WBS | 项目计划原型 |
| 22 | 1.3.1.2 | **需求工程阶段-修订** |  | 1d | 2018-09-30 A | 2018-09-30 A | 15 | 100% |  |  |  |  |  | 24h | 24h |  |  |
| 23 | 1.3.1.2.1 | 需求工程起草文档修订 | milestone, manual | 0.5d | 2018-09-30 A | 2018-09-30 A | 21 | 100% |  |  |  |  | 张嘉诚 | 4h | 4h | 需求工程起草文档 | 需求工程文档 |
| 24 | 1.3.1.2.2 | 项目计划修订 | milestone, manual | 0.5d | 2018-09-30 A | 2018-09-30 A | 21 | 100% |  |  |  |  | 苏碧青; 张嘉诚; 赵豪杰; 郑丞钧; 罗培城 | 20h | 20h | 项目计划原型 | 项目计划 |

| ID | WBS | Task | Type | Duration | Start | Finish | Predecessors | Complete | Remaining | Total slack | Free slack | Constraint | Resources | Work | Actual work | 输入 | 输出 |
| --- | --- | --- | --- | --- | --- | --- | --- | --- | --- | --- | --- | --- | --- | --- | --- | --- | --- |
| 25 | 1.3.1.3 | **需求获取** |  | 8d | 2018-10-08 A | 2018-10-16 | 22 | 47% | 4.22d |  |  |  |  | 145.6h | 101.6h |  |  |
| 26 | 1.3.1.3.1 | 定义愿景和范围 | manual | 0.5d | 2018-10-08 A | 2018-10-08 A | 24 | 100% |  |  |  |  | 赵豪杰 | 4h | 4h | 项目计划 | 定义结果 |
| 27 | 1.3.1.3.2 | 确定需求开发过程 | manual | 0.5d | 2018-10-08 A | 2018-10-08 A | 24 | 100% |  |  |  |  | 赵豪杰 | 4h | 4h | 定义结果 | 开发过程 |
| 28 | 1.3.1.3.3 | 用户群分类 | manual | 1d | 2018-10-08 A | 2018-10-08 A | 24 | 100% |  |  |  |  | 张嘉诚 | 8h | 8h | 软件使用目标 | 分类结果 |
| 29 | 1.3.1.3.4 | UML学习 | manual | 1d | 2018-10-09 A | 2018-10-09 A | 24 | 100% |  |  |  |  | 罗培城; 苏碧青; 张嘉诚; 赵豪杰; 郑丞钧 | 40h | 40h |  |  |
| 30 | 1.3.1.3.5 | 小组会议 | manual | 1d | 2018-10-10 A | 2018-10-10 A | 28 | 100% |  |  |  |  | 苏碧青; 张嘉诚; 赵豪杰; 郑丞钧; 罗培城 | 40h | 40h | 学习笔记 | 会议记录 |
| 31 | 1.3.1.3.6 | 选择产品代表 | manual | 0.1d | 2018-10-11 A | 2018-10-11 A | 30 | 100% |  |  |  |  | 苏碧青 | 0.8h | 0.8h | 会议记录 | 选择结果 |
| 32 | 1.3.1.3.7 | 建立核心队伍 | manual | 0.1d | 2018-10-11 A | 2018-10-11 A | 30 | 100% |  |  |  |  | 赵豪杰 | 0.8h | 0.8h | 会议记录 | 核心队伍 |
| 33 | 1.3.1.3.8 | 与杨枨老师进行需求访谈 | manual | 0.1d | 2018-10-11 A | 2018-10-11 A | 32 | 100% |  |  |  |  | 罗培城; 苏碧青; 张嘉诚; 赵豪杰; 郑丞钧 | 4h | 4h | 会议记录 | 访谈记录 |
| 34 | 1.3.1.3.9 | 小组会议 | manual | 0.1d | 2018-10-11 | 2018-10-11 | 33 |  |  |  |  |  | 罗培城; 苏碧青; 张嘉诚; 赵豪杰; 郑丞钧 | 4h |  | 访谈记录 | 会议记录 |
| 35 | 1.3.1.3.10 | 确定使用实例 | manual | 1d | 2018-10-11 | 2018-10-12 | 34 |  |  |  |  |  | 郑丞钧 | 8h |  | 会议记录 | 使用实例 |
| 36 | 1.3.1.3.11 | 分析用户工作流程 | manual | 0.5d | 2018-10-12 | 2018-10-12 | 34 |  |  |  |  |  | 张嘉诚 | 4h |  | 用户工作流程 | 分析结果 |
| 37 | 1.3.1.3.12 | 确定质量属性 | manual | 0.5d | 2018-10-12 | 2018-10-12 | 34 |  |  |  |  |  | 张嘉诚 | 4h |  | 确定质量属性 | 确定结果 |
| 38 | 1.3.1.3.13 | 检查问题报告 | manual | 1d | 2018-10-13 | 2018-10-13 | 37 |  |  |  |  |  | 罗培城 | 8h |  | 检查问题报告 | 检查结果 |
| 39 | 1.3.1.3.14 | 需求重用 | manual | 1d | 2018-10-15 | 2018-10-15 | 38 |  |  |  |  |  | 苏碧青 | 8h |  | 用户需求 | 确认结果 |
| 40 | 1.3.1.3.15 | 与杨枨老师进行需求确认 | manual | 0.1d | 2018-10-16 | 2018-10-16 | 39 |  |  |  |  |  | 赵豪杰; 罗培城; 苏碧青; 张嘉诚; 郑丞钧 | 4h |  | 确认结果 | 与杨枨老师确认结果 |
| 41 | 1.3.1.3.16 | 小组会议 | manual | 0.1d | 2018-10-16 | 2018-10-16 | 40 |  |  |  |  |  | 罗培城; 苏碧青; 张嘉诚; 赵豪杰; 郑丞钧 | 4h |  | 与杨枨老师确认结果 | 会议记录 |
| 42 | 1.3.1.3.17 | 需求整理 | milestone, manual | 0.5d | 2018-10-16 | 2018-10-16 | 41 |  |  |  |  |  |  |  |  |  |  |
| 43 | 1.3.1.4 | **需求分析** |  | 7d | 2018-10-17 | 2018-10-25 | 25 |  |  |  |  |  |  | 148h |  |  |  |
| 44 | 1.3.1.4.1 | 绘制关联图 | manual | 1d | 2018-10-16 | 2018-10-17 | 42 |  |  |  |  |  | 苏碧青 | 8h |  | 需求内容 | 关联图 |
| 45 | 1.3.1.4.2 | 创建开发原型 | manual | 1d | 2018-10-16 | 2018-10-17 | 42 |  |  |  |  |  | 郑丞钧 | 8h |  | 关联图 | 需求原型 |
| 46 | 1.3.1.4.3 | 分析可行性 | manual | 1d | 2018-10-16 | 2018-10-17 | 42 |  |  |  |  |  | 罗培城 | 8h |  | 需求原型 | 可行性分析文档 |
| 47 | 1.3.1.4.4 | 确定需求优先级 | manual | 1d | 2018-10-16 | 2018-10-17 | 42 |  |  |  |  |  | 张嘉诚 | 8h |  | 可行性分析文档 | 需求优先级结果 |
| 48 | 1.3.1.4.5 | 小组会议 | manual | 0.1d | 2018-10-17 | 2018-10-17 | 47 |  |  |  |  |  | 罗培城; 苏碧青; 张嘉诚; 赵豪杰; 郑丞钧 | 4h |  | 需求模型 | 会议记录 |
| 49 | 1.3.1.4.6 | UML学习 | manual | 1d | 2018-10-18 | 2018-10-18 | 48 |  |  |  |  |  | 罗培城; 苏碧青; 张嘉诚; 赵豪杰; 郑丞钧 | 40h |  |  |  |
| 50 | 1.3.1.4.7 | 与杨枨老师进行需求访谈 |  | 0.2d | 2018-10-23 | 2018-10-23 | 48 |  |  | 1.6d | 0d | start no earlier than 2018-10-23 | 罗培城; 苏碧青; 张嘉诚; 赵豪杰; 郑丞钧 | 8h |  | 会议记录 | 访谈记录 |
| 51 | 1.3.1.4.8 | 小组会议 | manual | 0.2d | 2018-10-23 | 2018-10-23 | 50 |  |  |  |  |  | 罗培城; 苏碧青; 张嘉诚; 赵豪杰; 郑丞钧 | 8h |  | 访谈记录 | 会议记录 |
| 52 | 1.3.1.4.9 | 编写数据字典 | milestone, manual | 1d | 2018-10-24 | 2018-10-24 | 50 |  |  |  |  |  | 张嘉诚 | 8h |  | 系统内容 | 数据字典 |
| 53 | 1.3.1.4.10 | 需求建模 | milestone, manual | 1d | 2018-10-24 | 2018-10-24 | 50 |  |  |  |  |  | 郑丞钧 | 8h |  | 系统内容 | 用例 |
| 54 | 1.3.1.4.11 | UML学习 | manual | 1d | 2018-10-25 | 2018-10-25 | 51 |  |  |  |  |  | 罗培城; 苏碧青; 张嘉诚; 赵豪杰; 郑丞钧 | 40h |  |  |  |

| ID | WBS | Task | Type | Duration | Start | Finish | Predecessors | Total slack | Resources | Work | 输入 | 输出 |
| --- | --- | --- | --- | --- | --- | --- | --- | --- | --- | --- | --- | --- |
| 55 | 1.3.1.5 | **需求规格说明** |  | 12d | 2018-10-26 | 2018-11-08 | 43 |  |  | 157.6h |  |  |
| 56 | 1.3.1.5.1 | 采用软件需求规格说明模板 | manual | 1d | 2018-10-26 | 2018-10-26 | 54 |  | 赵豪杰 | 8h | 访谈记录 | 模板采用结果 |
| 57 | 1.3.1.5.2 | 指明需求来源 | manual | 1d | 2018-10-27 | 2018-10-27 | 56 |  | 郑丞钧 | 8h | 需求记录 | 明确来源 |
| 58 | 1.3.1.5.3 | 钓鱼用户访谈 | manual | 0.9d | 2018-10-28 | 2018-10-28 | 57 |  | 罗培城; 苏碧青; 张嘉诚; 赵豪杰; 郑丞钧 | 36h | 明确来源 | 访谈记录 |
| 59 | 1.3.1.5.4 | 小组会议 | manual | 0.1d | 2018-10-28 | 2018-10-28 | 58 |  | 罗培城; 苏碧青; 张嘉诚; 赵豪杰; 郑丞钧 | 4h | 访谈记录 | 会议记录 |
| 60 | 1.3.1.5.5 | 为每个需求分配唯一标识 | manual | 0.2d | 2018-10-29 | 2018-10-29 | 59 |  | 张嘉诚 | 1.6h | 会议记录 | 标识需求 |
| 61 | 1.3.1.5.6 | UML学习 | manual | 0.8d | 2018-10-29 | 2018-10-29 | 59 |  | 罗培城; 苏碧青; 张嘉诚; 赵豪杰; 郑丞钧 | 32h |  |  |
| 62 | 1.3.1.5.7 | 记录业务规范 | manual | 1d | 2018-10-30 | 2018-10-30 | 59 |  | 苏碧青 | 8h | 项目需求 | 业务规范 |
| 63 | 1.3.1.5.8 | 小组会议 | manual | 1d | 2018-10-31 | 2018-10-31 | 62 |  | 罗培城; 苏碧青; 张嘉诚; 赵豪杰; 郑丞钧 | 40h | 业务规范 | 会议记录 |
| 64 | 1.3.1.5.9 | 整理成需求规格说明书 | milestone, manual | 1d | 2018-11-01 | 2018-11-01 | 63 |  | 赵豪杰 | 8h | 会议记录 | 需求规格说明书 |
| 65 | 1.3.1.5.10 | 与杨枨老师进行交流 | manual | 0.2d | 2018-11-02 | 2018-11-02 | 64 |  | 罗培城; 苏碧青; 张嘉诚; 郑丞钧; 赵豪杰 | 8h | 需求规格说明书 | 交流记录 |
| 66 | 1.3.1.5.11 | 小组会议 | manual | 0.1d | 2018-11-02 | 2018-11-02 | 65 |  | 罗培城; 苏碧青; 张嘉诚; 赵豪杰; 郑丞钧 | 4h | 交流记录 | 会议记录 |
| 67 | 1.3.1.6 | **验证** |  | 4d | 2018-11-05 | 2018-11-08 | 55 |  |  | 104h |  |  |
| 68 | 1.3.1.6.1 | 评审需求 | manual | 1d | 2018-11-05 | 2018-11-05 | 66 |  | 罗培城; 苏碧青; 张嘉诚; 赵豪杰; 郑丞钧 | 40h | 需求规格说明书 | 评审结果 |
| 69 | 1.3.1.6.2 | 测试需求 | manual | 1d | 2018-11-06 | 2018-11-06 | 68 |  | 罗培城; 苏碧青 | 16h | 评审结果 | 测试结果 |
| 70 | 1.3.1.6.3 | 原型修改 | milestone, manual | 1d | 2018-11-07 | 2018-11-07 | 69 |  | 赵豪杰 | 8h | 测试结果 | 新的原型 |
| 71 | 1.3.1.6.4 | 小组会议 | manual | 1d | 2018-11-08 | 2018-11-08 | 70 |  | 罗培城; 苏碧青; 张嘉诚; 赵豪杰; 郑丞钧 | 40h | 原型 | 会议记录 |
| 72 | 1.3.2 | **第二次迭代** |  | 7d | 2018-11-09 | 2018-11-16 | 14 |  |  | 136h |  |  |
| 73 | 1.3.2.1 | **需求分析** |  | 3d | 2018-11-09 | 2018-11-12 | 71 | 0d |  | 32h |  |  |
| 74 | 1.3.2.1.1 | 细化用户需求 | manual | 1d | 2018-11-09 | 2018-11-09 | 71 |  | 罗培城 | 8h | 需求获取文档 | 更进后的需求文档 |
| 75 | 1.3.2.1.2 | 得出功能需求 | manual | 1d | 2018-11-09 | 2018-11-09 | 71 |  | 苏碧青 | 8h | 更进后的需求文档 | 功能需求 |
| 76 | 1.3.2.1.3 | 修改数据字典 | manual | 1d | 2018-11-10 | 2018-11-10 | 74, 75 |  | 张嘉诚 | 8h | 功能需求 | 新的数据字典 |
| 77 | 1.3.2.1.4 | 需求建模 | milestone, manual | 1d | 2018-11-12 | 2018-11-12 | 76 |  | 郑丞钧 | 8h | 新的数据字典 | 需求模型 |
| 78 | 1.3.2.2 | **原型开发** |  | 4d | 2018-11-13 | 2018-11-16 | 73 |  |  | 24h |  |  |
| 79 | 1.3.2.2.1 | 界面布局设计 | manual | 1d | 2018-11-13 | 2018-11-13 | 77 |  | 罗培城 | 8h | 需求模型 | 界面原型 |
| 80 | 1.3.2.2.2 | 原件样式设计 | manual | 1d | 2018-11-13 | 2018-11-13 | 77 |  | 苏碧青 | 8h | 需求模型 | 样式 |
| 81 | 1.3.2.2.3 | 总体构建 | milestone, manual | 1d | 2018-11-14 | 2018-11-14 | 79, 80 |  | 赵豪杰 | 8h | 界面原型，样式 | 界面 |
| 82 | 1.3.2.3 | 小组会议 | manual | 1d | 2018-11-15 | 2018-11-15 | 81 |  | 罗培城; 苏碧青; 张嘉诚; 赵豪杰; 郑丞钧 | 40h | 界面 | 会议记录 |
| 83 | 1.3.2.4 | 与杨枨老师进行交流 | manual | 1d | 2018-11-16 | 2018-11-16 | 82 |  | 罗培城; 苏碧青; 张嘉诚; 赵豪杰; 郑丞钧 | 40h | 会议记录 | 访谈记录 |

| ID | WBS | Task | Type | Duration | Start | Finish | Predecessors | Total slack | Constraint | Resources | Work | 输入 | 输出 |
| --- | --- | --- | --- | --- | --- | --- | --- | --- | --- | --- | --- | --- | --- |
| 84 | 1.4 | **项目控制** |  | 22d | 2018-12-03 | 2018-12-31 | 13 |  |  |  | 304h |  |  |
| 85 | 1.4.1 | **需求规格审核** |  | 5d | 2018-12-03 | 2018-12-07 | 83 |  |  |  | 152h |  |  |
| 86 | 1.4.1.1 | 审查需求文档 | manual | 1d | 2018-12-03 | 2018-12-03 | 83 |  |  | 赵豪杰 | 8h | 需求规格说明书 | 审查结果 |
| 87 | 1.4.1.2 | 小组会议 | manual | 1d | 2018-12-04 | 2018-12-04 | 86 |  |  | 罗培城; 苏碧青; 张嘉诚; 赵豪杰; 郑丞钧 | 40h | 审查结果 | 会议记录 |
| 88 | 1.4.1.3 | 编写需求文档 | manual | 1d | 2018-12-05 | 2018-12-05 | 87 |  |  | 罗培城 | 8h | 会议记录 | 需求文档 |
| 89 | 1.4.1.4 | 编写用户手册 | manual | 1d | 2018-12-05 | 2018-12-05 | 87 |  |  | 苏碧青 | 8h | 需求文档 | 用户手册 |
| 90 | 1.4.1.5 | 确定合格的标准 | manual | 1d | 2018-12-05 | 2018-12-05 | 87 |  |  | 张嘉诚 | 8h | 用户手册 | 合格标准 |
| 91 | 1.4.1.6 | 小组会议 | manual | 1d | 2018-12-06 | 2018-12-06 | 88, 89, 90 |  |  | 罗培城; 苏碧青; 张嘉诚; 赵豪杰; 郑丞钧 | 40h | 需求文档，用户手册，合格标准 | 会议记录 |
| 92 | 1.4.1.7 | 与杨枨老师进行交流 | manual | 1d | 2018-12-07 | 2018-12-07 | 91 |  |  | 罗培城; 苏碧青; 张嘉诚; 赵豪杰; 郑丞钧 | 40h | 会议记录 | 交流记录 |
| 93 | 1.4.2 | **需求管理** |  | 10d | 2018-12-10 | 2018-12-20 | 85 |  |  |  | 152h |  |  |
| 94 | 1.4.2.1 | 小组会议 | manual | 1d | 2018-12-10 | 2018-12-10 | 92 |  |  | 罗培城; 苏碧青; 张嘉诚; 赵豪杰; 郑丞钧 | 40h | 交流记录 | 会议记录 |
| 95 | 1.4.2.2 | 确定变更控制过程 | manual | 1d | 2018-12-11 | 2018-12-11 | 94 |  |  | 赵豪杰 | 8h | 会议记录 | 变更控制过程 |
| 96 | 1.4.2.3 | 建立变更控制委员会 | manual | 1d | 2018-12-12 | 2018-12-12 | 94 |  |  | 赵豪杰 | 8h | 变更控制过程 | 变更控制委员会 |
| 97 | 1.4.2.4 | 进行变更影响分析 | manual | 1d | 2018-12-13 | 2018-12-13 | 96 |  |  | 罗培城 | 8h | 变更控制委员会 | 变更影响分析 |
| 98 | 1.4.2.5 | 跟踪每一项变更 | manual | 1d | 2018-12-14 | 2018-12-14 | 97 |  |  | 郑丞钧 | 8h | 变更影响分析 | 跟踪状态记录 |
| 99 | 1.4.2.6 | 编写需求文档的基准版本和控制版本 | manual | 1d | 2018-12-15 | 2018-12-15 | 98 |  |  | 苏碧青 | 8h | 跟踪状态记录 | 需求文档基准版本和控制版本 |
| 100 | 1.4.2.7 | 维护变更历史纪录 | manual | 1d | 2018-12-17 | 2018-12-17 | 99 |  |  | 张嘉诚 | 8h | 需求文档基准版本和控制版本 | 维护结果 |
| 101 | 1.4.2.8 | 小组会议 | manual | 1d | 2018-12-18 | 2018-12-18 | 99 |  |  | 罗培城; 苏碧青; 张嘉诚; 赵豪杰; 郑丞钧 | 40h | 维护结果 | 会议记录 |
| 102 | 1.4.2.9 | 跟踪需求状态 | manual | 1d | 2018-12-19 | 2018-12-19 | 101 |  |  | 赵豪杰 | 8h | 会议记录 | 跟踪状态记录 |
| 103 | 1.4.2.10 | 衡量需求稳定性 | manual | 1d | 2018-12-19 | 2018-12-19 | 101 |  |  | 罗培城 | 8h | 跟踪状态记录 | 需求稳定性记录 |
| 104 | 1.4.2.11 | 使用需求管理工具 | manual | 1d | 2018-12-20 | 2018-12-20 | 103 |  |  | 郑丞钧 | 8h | 需求稳定性记录 | 存储需求 |
| 105 | 1.5 | **编码/测试计划** |  | 12d | 2018-12-21 | 2019-01-05 | 93 |  |  |  | 480h |  |  |
| 106 | 1.5.1 | Android端编码 | manual | 6d | 2018-12-21 | 2018-12-28 | 104 |  |  | 苏碧青; 张嘉诚; 罗培城 | 144h | 代码 | 前端作品 |
| 107 | 1.5.2 | 服务器端编码 | manual | 6d | 2018-12-21 | 2018-12-28 | 104 |  |  | 赵豪杰; 郑丞钧 | 96h | 代码 | 后端作品 |
| 108 | 1.5.3 | 联合调试 |  | 6d | 2018-12-31 | 2019-01-05 | 106, 107 | 3d | finish no earlier than 2019-01-05 | 罗培城; 苏碧青; 张嘉诚; 赵豪杰; 郑丞钧 | 240h | 前端代码、后端代码 | 渔乐生活app |

| ID | WBS | Task | Type | Duration | Start | Finish | Predecessors | Resources | Work | 输入 | 输出 |
| --- | --- | --- | --- | --- | --- | --- | --- | --- | --- | --- | --- |
| 110 | 1.6 | **项目收尾** |  | 4d | 2019-01-06 | 2019-01-09 | 84 |  | 96h |  |  |
| 111 | 1.6.1 | 文档整理 | milestone, manual | 1d | 2019-01-06 | 2019-01-06 | 93 | 罗培城; 苏碧青; 张嘉诚; 赵豪杰; 郑丞钧 | 40h | 需求规格说明书 | 项目文档 |
| 112 | 1.6.2 | 制作PPT | milestone, manual | 1d | 2019-01-07 | 2019-01-07 | 95 | 张嘉诚 | 8h | 需求稳定性记录 | ppt |
| 113 | 1.6.3 | 小组会议 | manual | 0.2d | 2019-01-08 | 2019-01-08 | 96 | 罗培城; 苏碧青; 张嘉诚; 赵豪杰; 郑丞钧 | 8h | ppt | 会议记录 |
| 114 | 1.6.4 | 答辩 | manual | 1d | 2019-01-09 | 2019-01-09 | 97 | 罗培城; 苏碧青; 张嘉诚; 赵豪杰; 郑丞钧 | 40h | 文档，作品 | 考评结果，期末成绩 |
